# projektplan_ipa

Schedule from MS Project, 2021-03-29 to 2021-04-14.

## Calendars

- Standard: Mon-Fri 08:00-12:00, 13:00-17:00; Sat-Sun off. Exceptions (off unless hours are given): 2021-04-02 to 2021-04-05 (Ostern), 2021-04-12 (Schule).

## Schedule

| ID | WBS | Task | Type | Duration | Start | Finish | Predecessors | Baseline start | Baseline finish | Baseline duration | Total slack |
| --- | --- | --- | --- | --- | --- | --- | --- | --- | --- | --- | --- |
| 1 | 1 | **3D Web Anwendung des OSE Modells für die Produktion vorbereiten** |  | 10d | 2021-03-29 08:00 | 2021-04-14 17:00 |  | 2021-03-29 08:00 | 2021-04-14 17:00 | 10d | 0d |
| 2 | 1.1 | **Initiale Dokumentation** |  | 0.62d | 2021-03-29 08:00 | 2021-03-29 14:00 |  | 2021-03-29 08:00 | 2021-03-29 14:00 | 0.62d | 0d |
| 3 | 1.1.1 | Projektplan erstellen |  | 2h | 2021-03-29 08:00 | 2021-03-29 10:00 |  | 2021-03-29 08:00 | 2021-03-29 10:00 | 2h | 0d |
| 4 | 1.1.2 | Aufgabenstellung übernehmen |  | 1h | 2021-03-29 10:00 | 2021-03-29 11:00 | 3 | 2021-03-29 10:00 | 2021-03-29 11:00 | 1h | 0d |
| 5 | 1.1.3 | Projektmanagementmethode beschreiben |  | 2h | 2021-03-29 11:00 | 2021-03-29 14:00 | 4 | 2021-03-29 11:00 | 2021-03-29 14:00 | 2h | 0d |
| 6 | 1.1.4 | Initiale Dokumentation erstellt | milestone | 0d | 2021-03-29 14:00 | 2021-03-29 14:00 | 5 | 2021-03-29 14:00 | 2021-03-29 14:00 | 0d | 0d |
| 7 | 1.2 | **Analyse** |  | 1.88d | 2021-03-29 14:00 | 2021-03-31 12:00 |  | 2021-03-29 14:00 | 2021-03-31 12:00 | 1.88d | 0d |
| 8 | 1.2.1 | Systembeschreibung |  | 2h | 2021-03-29 14:00 | 2021-03-29 16:00 | 6 | 2021-03-29 14:00 | 2021-03-29 16:00 | 2h | 0d |
| 9 | 1.2.2 | Soll/Ist-Vergleich |  | 2h | 2021-03-29 16:00 | 2021-03-30 09:00 | 8 | 2021-03-29 16:00 | 2021-03-30 09:00 | 2h | 0d |
| 10 | 1.2.3 | Versionsverwaltungskonzept |  | 1h | 2021-03-30 09:00 | 2021-03-30 10:00 | 9 | 2021-03-30 09:00 | 2021-03-30 10:00 | 1h | 0d |
| 11 | 1.2.4 | Backupkonzept |  | 1h | 2021-03-30 10:00 | 2021-03-30 11:00 | 10 | 2021-03-30 10:00 | 2021-03-30 11:00 | 1h | 0d |
| 12 | 1.2.5 | Personas beschreiben |  | 1h | 2021-03-30 11:00 | 2021-03-30 12:00 | 11 | 2021-03-30 11:00 | 2021-03-30 12:00 | 1h | 0d |
| 13 | 1.2.6 | User Stories erstellen |  | 2h | 2021-03-30 13:00 | 2021-03-30 15:00 | 12 | 2021-03-30 13:00 | 2021-03-30 15:00 | 2h | 0d |
| 14 | 1.2.7 | OAuth2 Strategie erarbeiten |  | 4h | 2021-03-30 15:00 | 2021-03-31 10:00 | 13 | 2021-03-30 15:00 | 2021-03-31 10:00 | 4h | 0d |
| 15 | 1.2.8 | OAuth2 Strategie mit Marco Roth oder Markus Strittmatter besprechen |  | 1h | 2021-03-31 10:00 | 2021-03-31 11:00 | 14 | 2021-03-31 10:00 | 2021-03-31 11:00 | 1h | 0d |
| 16 | 1.2.9 | Feedback zu OAuth2konzept übernehmen |  | 1h | 2021-03-31 11:00 | 2021-03-31 12:00 | 15 | 2021-03-31 11:00 | 2021-03-31 12:00 | 1h | 0d |
| 17 | 1.2.10 | Analyse abgeschlossen | milestone | 0d | 2021-03-31 12:00 | 2021-03-31 12:00 | 16 | 2021-03-31 12:00 | 2021-03-31 12:00 | 0d | 0d |
| 18 | 1.3 | **Entwurf** |  | 1.25d | 2021-03-31 13:00 | 2021-04-01 15:00 |  | 2021-03-31 13:00 | 2021-04-01 15:00 | 1.25d | 0d |
| 19 | 1.3.1 | Softwareschnittstellen |  | 2h | 2021-03-31 13:00 | 2021-03-31 15:00 | 17 | 2021-03-31 13:00 | 2021-03-31 15:00 | 2h | 0d |
| 20 | 1.3.2 | Mockups erstellen |  | 2h | 2021-03-31 15:00 | 2021-03-31 17:00 | 19 | 2021-03-31 15:00 | 2021-03-31 17:00 | 2h | 0d |
| 21 | 1.3.3 | Mockups mit Auftraggeber besprechen |  | 1h | 2021-04-01 08:00 | 2021-04-01 09:00 | 20 | 2021-04-01 08:00 | 2021-04-01 09:00 | 1h | 0d |
| 22 | 1.3.4 | Feedback übernehmen |  | 1h | 2021-04-01 09:00 | 2021-04-01 10:00 | 21 | 2021-04-01 09:00 | 2021-04-01 10:00 | 1h | 0d |
| 23 | 1.3.5 | Testkonzept erarbeiten |  | 4h | 2021-04-01 10:00 | 2021-04-01 15:00 | 22 | 2021-04-01 10:00 | 2021-04-01 15:00 | 4h | 0d |
| 24 | 1.3.6 | Abschluss Entwurf | milestone | 0h | 2021-04-01 15:00 | 2021-04-01 15:00 | 23 | 2021-04-01 15:00 | 2021-04-01 15:00 | 0h | 0d |

| ID | WBS | Task | Type | Duration | Start | Finish | Predecessors | Baseline start | Baseline finish | Baseline duration | Total slack | Soll |
| --- | --- | --- | --- | --- | --- | --- | --- | --- | --- | --- | --- | --- |
| 25 | 1.4 | **Implementierung** |  | 4d | 2021-04-01 15:00 | 2021-04-09 15:00 |  | 2021-04-01 15:00 | 2021-04-09 15:00 | 4d | 0d | 54 |
| 26 | 1.4.1 | OAuth2 Strategie implementieren im backend |  | 4h | 2021-04-01 15:00 | 2021-04-06 10:00 | 24 | 2021-04-01 15:00 | 2021-04-06 10:00 | 4h | 0d |  |
| 27 | 1.4.2 | OAuth2 Strategie implementieren im Frontend |  | 4h | 2021-04-06 10:00 | 2021-04-06 15:00 | 26 | 2021-04-06 10:00 | 2021-04-06 15:00 | 4h | 0d |  |
| 28 | 1.4.3 | Model entität erstellen und für REST anbieten |  | 4h | 2021-04-06 15:00 | 2021-04-07 10:00 | 27 | 2021-04-06 15:00 | 2021-04-07 10:00 | 4h | 0d |  |
| 29 | 1.4.4 | Konfigurationsmenü erstellen |  | 4h | 2021-04-07 10:00 | 2021-04-07 15:00 | 28 | 2021-04-07 10:00 | 2021-04-07 15:00 | 4h | 0d |  |
| 30 | 1.4.5 | Automatisches verlinken |  | 4h | 2021-04-07 15:00 | 2021-04-08 10:00 | 29 | 2021-04-07 15:00 | 2021-04-08 10:00 | 4h | 0d |  |
| 31 | 1.4.6 | location entität erstellen und per rest anbieten |  | 4h | 2021-04-08 10:00 | 2021-04-08 15:00 | 30 | 2021-04-08 10:00 | 2021-04-08 15:00 | 4h | 0d |  |
| 32 | 1.4.7 | Standortwahl&wechsel implementieren |  | 4h | 2021-04-08 15:00 | 2021-04-09 10:00 | 31 | 2021-04-08 15:00 | 2021-04-09 10:00 | 4h | 0d |  |
| 33 | 1.4.8 | Dokumentation |  | 4h | 2021-04-09 10:00 | 2021-04-09 15:00 | 32 | 2021-04-09 10:00 | 2021-04-09 15:00 | 4h | 0d |  |
| 34 | 1.4.9 | Abschluss implementierung | milestone | 0d | 2021-04-09 15:00 | 2021-04-09 15:00 | 33 | 2021-04-09 15:00 | 2021-04-09 15:00 | 0d | 0d |  |
| 35 | 1.5 | **Testen** |  | 1d | 2021-04-09 15:00 | 2021-04-13 15:00 |  | 2021-04-09 15:00 | 2021-04-13 15:00 | 1d | 0d |  |
| 36 | 1.5.1 | Testcases abarbeiten |  | 4h | 2021-04-09 15:00 | 2021-04-13 10:00 | 34 | 2021-04-09 15:00 | 2021-04-13 10:00 | 4h | 0d |  |
| 37 | 1.5.2 | Dokumentation |  | 4h | 2021-04-13 10:00 | 2021-04-13 15:00 | 36 | 2021-04-13 10:00 | 2021-04-13 15:00 | 4h | 0d |  |
| 38 | 1.5.3 | Abschluss testen | milestone | 0d | 2021-04-13 15:00 | 2021-04-13 15:00 | 37 | 2021-04-13 15:00 | 2021-04-13 15:00 | 0d | 0d |  |
| 39 | 1.6 | **Abschluss** |  | 1.25d | 2021-04-13 15:00 | 2021-04-14 17:00 |  | 2021-04-13 15:00 | 2021-04-14 17:00 | 1.25d | 0d |  |
| 40 | 1.6.1 | Kurzfassung |  | 2h | 2021-04-13 15:00 | 2021-04-13 17:00 | 38 | 2021-04-13 15:00 | 2021-04-13 17:00 | 2h | 0d |  |
| 41 | 1.6.2 | Dokumentation überprüfen |  | 4h | 2021-04-14 08:00 | 2021-04-14 12:00 | 40 | 2021-04-14 08:00 | 2021-04-14 12:00 | 4h | 0d |  |
| 42 | 1.6.3 | Dokumentation anpassen |  | 4h | 2021-04-14 13:00 | 2021-04-14 17:00 | 41 | 2021-04-14 13:00 | 2021-04-14 17:00 | 4h | 0d |  |
| 43 | 1.7 | Abschluss IPA | milestone | 0d | 2021-04-14 17:00 | 2021-04-14 17:00 | 42 | 2021-04-14 17:00 | 2021-04-14 17:00 | 0d | 0d |  |
